How a schedule from MS Project changed from version to version. A marks actual dates.

## Version 1 (saved 2012-02-04)

Note of the change: First commit. Includes Alan's current config, NSF proposal, and project file.

| ID | Task | Duration | Start | Finish | Predecessors | Complete | Total float |
| --- | --- | --- | --- | --- | --- | --- | --- |
| 1 | CAD Allen's Drive Base | 5d | 2012-02-03 | 2012-02-09 |  |  | 52d |
| 2 | CAD/find models of all components | 1d | 2012-02-10 | 2012-02-10 |  |  | 51d |
| 3 | Figure out component mounting and weight distribution | 5d | 2012-02-14 | 2012-02-20 | 2, 1, 8 |  | 50d |
| 4 | Order computer | 5d | 2012-02-03 | 2012-02-09 |  |  | 55d |
| 5 | Order inverter and related cabling | 5d | 2012-02-03 A | 2012-02-09 |  | 14% | 53d |
| 6 | Get Kinect (Do we have one?) | 7d | 2012-02-03 | 2012-02-13 |  |  | 61d |
| 7 | Fabricate all mechanical parts (frame rails, mounting brackets) | 5d | 2012-02-21 | 2012-02-27 | 3 |  | 50d |
| 8 | Finalize sensor package | 1d | 2012-02-13 | 2012-02-13 |  |  | 50d |
| 9 | Rebuild Alan's Frame | 1d | 2012-02-28 | 2012-02-28 | 7, 22 |  | 50d |
| 10 | Rewire Allen | 5d | 2012-03-01 | 2012-03-07 | 9, 6, 5 |  | 50d |
| 11 | Set Up Alan's new computer | 1d | 2012-02-29 | 2012-02-29 | 32 |  | 55d |
| 12 | Run rebuilt Alan's Mobile Base/Localization | 3d | 2012-03-12 | 2012-03-14 | 11, 13 |  | 50d |
| 13 | Calibrate Allen's systems | 2d | 2012-03-08 | 2012-03-09 | 11, 10 |  | 50d |
| 14 | Create ROS Position Control Package for IRB-120 | 10d | 2012-05-09 | 2012-05-22 | 15, 16 |  | 1d |
| 15 | Set up IRB-120 to respond to control from network | 10d | 2012-04-25 | 2012-05-08 | 20, 19 |  | 1d |
| 16 | Create ROS representation of IRB-120 (Joint/Link model, tied to 3D model for visualization) | 2d | 2012-02-23 | 2012-02-24 | 24 |  | 46d |
| 17 | Create ROS representation of full robot, incorporating existing drive base model and IRB-120 model | 5d | 2012-03-15 | 2012-03-21 | 16, 3 |  | 46d |
| 18 | Demonstrate working playback of robot model from recorded data | 5d | 2012-05-24 | 2012-05-30 | 17, 30 |  | 1d |
| 19 | Figure out what the deal is with HS network comms to IRC5 | 1d | 2012-02-03 | 2012-02-03 |  |  | 58d |
| 20 | Test IRB-120 with ABB software (prove it moves, run a small RAPID program) | 1d | 2012-04-24 | 2012-04-24 | 23 |  | 0d |
| 21 | Test IRB-120 with ABB software running from inverter power (prove it moves, run a small RAPID program) | 1d | 2012-05-31 | 2012-05-31 | 20, 5 |  | 0d |
| 22 | Disassemble Alan | 1d | 2012-02-22 | 2012-02-22 | 3 |  | 53d |
| 23 | Test IRB-120 Jogging Ability | 1d | 2012-04-23 A | 2012-04-23 A |  | 100% |  |
| 24 | Set Up Laptop for ROS Dev | 1d | 2012-02-21 | 2012-02-21 |  |  | 46d |
| 25 | Test ROS Setup by Bringing Jinx Online and Driving | 1d | 2012-03-22 | 2012-03-22 | 24 |  | 46d |
| 26 | Test Alan by Bringing Online and Driving | 2d | 2012-03-23 | 2012-03-26 | 25 |  | 46d |
| 27 | Test Alan LIDAR Localization | 1d | 2012-03-27 | 2012-03-27 | 26 |  | 46d |
| 28 | Find Out About Alan's HDD Contents from Tony | 7d | 2012-02-03 | 2012-02-13 |  |  | 77d |
| 29 | Set up Solidworks Workstation (Alan PC) | 1d | 2012-03-28 | 2012-03-28 | 28, 27 |  | 46d |
| 30 | Test Fully Assembled Robot under Teleop Control | 1d | 2012-05-23 | 2012-05-23 | 12, 14 |  | 1d |
| 31 | Have Wyatt Contact ABB About HS Network Comms (?) | 10d | 2012-02-06 | 2012-02-17 | 19 |  | 74d |
| 32 | Assemble Alan's Computer | 1d | 2012-02-27 | 2012-02-27 | 4 |  | 55d |

## Version 2 (saved 2012-02-05)

Note of the change: Minor updates to project file.

Last finish 2012-05-31 → 2012-05-09 (-22d).

Added:

| ID | Task | Duration | Start | Finish |
| --- | --- | --- | --- | --- |
| 33 | Integrate Arm and DT Control (Path Planning) | 1d? | 2012-02-03 | 2012-02-03 |

Changed:

| ID | Task | Start | Finish | Total float | Other |
| --- | --- | --- | --- | --- | --- |
| 1 | CAD Alan's Drive Base | 2012-02-03 → 2012-02-06 (+3d) | 2012-02-09 → 2012-02-10 (+1d) | 52d → 35d | was named CAD Allen's Drive Base; constraint none → start no earlier than 2012-02-06 |
| 2 | CAD/find models of all components | 2012-02-10 → 2012-02-13 (+3d) | 2012-02-10 → 2012-02-13 (+3d) | 51d → 34d | constraint none → start no earlier than 2012-02-06 |
| 3 | Figure out component mounting and weight distribution | 2012-02-14 → 2012-02-15 (+1d) | 2012-02-20 → 2012-02-21 (+1d) | 50d → 33d |  |
| 4 | Order computer | 2012-02-03 → 2012-02-08 (+5d) | 2012-02-09 → 2012-02-14 (+5d) | 55d → 38d | constraint none → start no earlier than 2012-02-08 |
| 6 | Get Kinect (Do we have one?) | 2012-02-03 → 2012-02-06 (+3d) | 2012-02-13 → 2012-02-14 (+1d) | 61d → 44d | constraint none → start no earlier than 2012-02-06 |
| 7 | Fabricate all mechanical parts (frame rails, mounting brackets) | 2012-02-21 → 2012-02-22 (+1d) | 2012-02-27 → 2012-02-28 (+1d) | 50d → 33d |  |
| 8 | Finalize sensor package | 2012-02-13 → 2012-02-14 (+1d) | 2012-02-13 → 2012-02-14 (+1d) | 50d → 33d | constraint none → start no earlier than 2012-02-06 |
| 9 | Rebuild Alan's Frame | 2012-02-28 → 2012-02-29 (+1d) | 2012-02-28 → 2012-02-29 (+1d) | 50d → 33d |  |
| 10 | Rewire Allen | 2012-03-01 → 2012-03-02 (+1d) | 2012-03-07 → 2012-03-08 (+1d) | 50d → 33d |  |
| 11 | Set Up Alan's new computer | 2012-02-29 → 2012-03-01 (+1d) | 2012-02-29 → 2012-03-01 (+1d) | 55d → 38d |  |
| 12 | Run rebuilt Alan's Mobile Base/Localization | 2012-03-12 → 2012-03-13 (+1d) | 2012-03-14 → 2012-03-15 (+1d) | 50d → 33d |  |
| 13 | Calibrate Allen's systems | 2012-03-08 → 2012-03-09 (+1d) | 2012-03-09 → 2012-03-12 (+3d) | 50d → 33d |  |
| 14 | Create ROS Position Control Package for IRB-120 | 2012-05-09 → 2012-04-17 (-22d) | 2012-05-22 → 2012-04-30 (-22d) |  |  |
| 15 | Set up IRB-120 to respond to control from network | 2012-04-25 → 2012-04-03 (-22d) | 2012-05-08 → 2012-04-16 (-22d) |  |  |
| 16 | Create ROS representation of IRB-120 (Joint/Link model, tied to 3D model for visualization) | 2012-02-23 → 2012-02-24 (+1d) | 2012-02-24 → 2012-02-27 (+3d) | 46d → 29d |  |
| 17 | Create ROS representation of full robot, incorporating existing drive base model and IRB-120 model | 2012-03-15 → 2012-03-16 (+1d) | 2012-03-21 → 2012-03-22 (+1d) | 46d → 29d |  |
| 18 | Demonstrate working playback of robot model from recorded data | 2012-05-24 → 2012-05-02 (-22d) | 2012-05-30 → 2012-05-08 (-22d) |  |  |
| 19 | Figure out what the deal is with HS network comms to IRC5 | 2012-02-03 → 2012-02-06 (+3d) | 2012-02-03 → 2012-02-06 (+3d) | 58d → 41d | constraint none → start no earlier than 2012-02-06 |
| 20 | Test IRB-120 with ABB software (prove it moves, run a small RAPID program) | 2012-04-24 → 2012-04-02 (-22d) | 2012-04-24 → 2012-04-02 (-22d) |  |  |
| 21 | Test IRB-120 on Inverter Power | 2012-05-31 → 2012-05-09 (-22d) | 2012-05-31 → 2012-05-09 (-22d) |  | was named Test IRB-120 with ABB software running from inverter power (prove it moves, run a small RAPID program) |
| 22 | Disassemble Alan | 2012-02-22 → 2012-02-23 (+1d) | 2012-02-22 → 2012-02-23 (+1d) | 53d → 36d |  |
| 23 | Test IRB-120 Jogging Ability | 2012-04-23 A → 2012-03-30 A (-24d) | 2012-04-23 A → 2012-03-30 A (-24d) |  |  |
| 24 | Set Up Laptop for ROS Dev | 2012-02-21 → 2012-02-22 (+1d) | 2012-02-21 → 2012-02-22 (+1d) | 46d → 29d | constraint none → start no earlier than 2012-02-06 |
| 25 | Test ROS Setup by Bringing Jinx Online and Driving | 2012-03-22 → 2012-03-23 (+1d) | 2012-03-22 → 2012-03-23 (+1d) | 46d → 29d |  |
| 26 | Test Alan by Bringing Online and Driving | 2012-03-23 → 2012-03-26 (+3d) | 2012-03-26 → 2012-03-27 (+1d) | 46d → 29d |  |
| 27 | Test Alan LIDAR Localization | 2012-03-27 → 2012-03-28 (+1d) | 2012-03-27 → 2012-03-28 (+1d) | 46d → 29d |  |
| 28 | Find Out About Alan's HDD Contents from Tony | 2012-02-03 → 2012-02-06 (+3d) | 2012-02-13 → 2012-02-14 (+1d) | 77d → 60d | constraint none → start no earlier than 2012-02-06 |
| 29 | Set up Solidworks Workstation (Alan PC) | 2012-03-28 → 2012-03-29 (+1d) | 2012-03-28 → 2012-03-29 (+1d) | 46d → 29d |  |
| 30 | Test Fully Assembled Robot under Teleop Control | 2012-05-23 → 2012-05-01 (-22d) | 2012-05-23 → 2012-05-01 (-22d) |  |  |
| 31 | Have Wyatt Contact ABB About HS Network Comms (?) | 2012-02-06 → 2012-02-07 (+1d) | 2012-02-17 → 2012-02-20 (+3d) | 74d → 57d |  |
| 32 | Assemble Alan's Computer | 2012-02-27 → 2012-02-28 (+1d) | 2012-02-27 → 2012-02-28 (+1d) | 55d → 38d |  |
